# FIRST_2994_2013_Fab

Schedule from MS Project, 2013-01-05 to 2013-04-08, 3.5 hours a day.

## Calendars

- Standard: Mon 16:00-18:00, 18:30-20:00; Tue off; Wed-Thu 16:00-18:00, 18:30-20:00; Fri off; Sat 16:00-18:00, 18:30-20:00; Sun off.

## Resources

| Resource | Group |
| --- | --- |
| Plyboy | Robot |
| Swish | Robot |
| Whammo | Robot |
| Jack McCracken | Software/Electrical |
| Gabrielle Genereux | Software/Electrical |
| Will Prado | Software/Electrical |
| Celina Vivian | Software/Electrical |
| Ross Andress | Software/Electrical |
| Laurence Cunnane | Software/Electrical |
| Kyle Bergeron | Software/Electrical |
| Ken James | Mentor |
| Dan Williston | Mentor |
| Shahrukh Alavi | Mentor |
| Nicholas Loomes | Mechanical Design |
| Sean Frank | Mechanical Design |
| Yannick Brisebois | Mechanical Design |
| Paolo Vargas | Mechanical Design |
| Sam McCracken | Mechanical Design |
| Joshua Garbutt-St. Jean | Mechanical Design |
| Marissa Law | Mechanical Design |
| Daniel Garner | Mechanical Design |
| Tyler Cooke | Mechanical Design |
| Bailey Kulla | Mechanical Design |
| Gabriele Leduc | Mechanical Design |
| Matthew Bailey | Mentor |
| Phil Genereux | Mentor |
| Andrew Verheyden | Fabrication and Assembly |
| Brandon Bates | Fabrication and Assembly |
| Bruno Chiaragato | Fabrication and Assembly |
| James Carr | Fabrication and Assembly |
| Liam Pelly | Fabrication and Assembly |
| David Gourevitch | Fabrication and Assembly |
| James Prado | Fabrication and Assembly |
| Robert Myszka | Fabrication and Assembly |
| Blair Hulaj | Fabrication and Assembly |
| Jordan Parisee | Fabrication and Assembly |
| Konnor Wood | Fabrication and Assembly |
| Paul McDonough | Mentor |
| Hugh Carry | Mentor |

## Schedule

| ID | WBS | Task | Type | Duration | Start | Finish | Predecessors | Total slack | Constraint |
| --- | --- | --- | --- | --- | --- | --- | --- | --- | --- |
| 1 | 1 | **Build Season Milestones** |  | 26d | 2013-01-05 | 2013-02-19 |  | 27.86d |  |
| 2 | 1.1 | Kickoff | milestone | 0d | 2013-01-05 | 2013-01-05 |  | 53.86d |  |
| 3 | 1.2 | Stop-Build Day | milestone | 0d | 2013-02-19 | 2013-02-19 |  | 27.86d | start no earlier than 2013-02-19 |
| 4 | 2 | **Hardware Milestones** |  | 21.29d? | 2013-01-05 | 2013-02-11 |  | 32.57d |  |
| 5 | 2.1 | CAD Done |  | 1d? | 2013-01-05 | 2013-01-05 |  | 52.86d |  |
| 6 | 2.2 | Plyboy Compressed Air Charging System Done | milestone | 0d | 2013-01-05 | 2013-01-05 |  | 53.86d |  |
| 7 | 2.3 | Whammo Compressed Air Charging System Done | milestone | 0d | 2013-01-05 | 2013-01-05 |  | 53.86d |  |
| 8 | 2.4 | Whammo Driving Mechanism Done | milestone | 0d | 2013-01-05 | 2013-01-05 | 37 | 52.86d |  |
| 9 | 2.5 | Whammo Frisbee Collector Done | milestone | 0d | 2013-01-05 | 2013-01-05 | 44 | 52.86d |  |
| 10 | 2.6 | Whammo Shooter Done | milestone | 0d | 2013-01-05 | 2013-01-05 | 51 | 52.86d |  |
| 11 | 2.7 | Whammo Climb Mechanism Done | milestone | 0d | 2013-01-05 | 2013-01-05 | 58 | 52.86d |  |
| 12 | 2.8 | Whammo Hardware Complete | milestone | 0d | 2013-02-11 | 2013-02-11 |  | 32.57d | finish no earlier than 2013-02-11 |
| 13 | 3 | **Competition Season** |  | 53.86d? | 2013-01-05 | 2013-04-08 |  | 0d |  |
| 14 | 3.1 | FRC Greater Toronto East Regional |  | 6.86d | 2013-03-07 | 2013-03-18 |  | 12d | start no earlier than 2013-03-07 |
| 15 | 3.2 | FRC Greater Toronto West Regional |  | 6.86d | 2013-03-28 | 2013-04-08 |  | 0d | start no earlier than 2013-03-28 |
| 16 | 3.3 | Read Manuals |  | 1d? | 2013-01-05 | 2013-01-05 |  | 52.86d |  |
| 17 | 3.4 | Game Analysis |  | 1d? | 2013-01-05 | 2013-01-05 |  | 52.86d |  |
| 18 | 3.5 | Game Strategy |  | 1d? | 2013-01-05 | 2013-01-05 |  | 52.86d |  |
| 19 | 4 | **Fabricate Field Parts** |  | 1d? | 2013-01-05 | 2013-01-05 |  | 52.86d |  |
| 20 | 4.1 | Fabricate Pyramid Parts |  | 1d? | 2013-01-05 | 2013-01-05 |  | 52.86d |  |
| 21 | 4.2 | Fabricate Goal Parts |  | 1d? | 2013-01-05 | 2013-01-05 |  | 52.86d |  |
| 22 | 4.3 | Fabricate Wall Parts |  | 1d? | 2013-01-05 | 2013-01-05 |  | 52.86d |  |
| 23 | 5 | **Assemble Field** |  | 1d? | 2013-01-05 | 2013-01-05 |  | 52.86d |  |
| 24 | 5.1 | Assemble Pyramid |  | 1d? | 2013-01-05 | 2013-01-05 |  | 52.86d |  |
| 25 | 5.2 | Assemble Goals |  | 1d? | 2013-01-05 | 2013-01-05 |  | 52.86d |  |
| 26 | 5.3 | Assemble Walls |  | 1d? | 2013-01-05 | 2013-01-05 |  | 52.86d |  |

| ID | WBS | Task | Duration | Start | Finish | Total slack | Free slack |
| --- | --- | --- | --- | --- | --- | --- | --- |
| 27 | 6 | **Assemble Gearbox** | 1d? | 2013-01-05 | 2013-01-05 | 52.86d |  |
| 28 | 6.1 | WhammoA Gearbox | 1d? | 2013-01-05 | 2013-01-05 | 52.86d |  |
| 29 | 6.2 | WhammoB Gearbox | 1d? | 2013-01-05 | 2013-01-05 | 52.86d |  |
| 30 | 6.3 | Order Mechanical Parts | 1d? | 2013-01-05 | 2013-01-05 | 52.86d |  |
| 31 | 7 | **Fabricate Robot Parts** | 1d? | 2013-01-05 | 2013-01-05 | 52.86d |  |
| 32 | 7.1 | WhammoA Robot Parts | 1d? | 2013-01-05 | 2013-01-05 | 52.86d |  |
| 33 | 7.2 | WhammoB Robot Parts | 1d? | 2013-01-05 | 2013-01-05 | 52.86d |  |
| 34 | 8 | **Assemble Drive Frame** | 1d? | 2013-01-05 | 2013-01-05 | 52.86d |  |
| 35 | 8.1 | WhammoA Assemble Drive Frame | 1d? | 2013-01-05 | 2013-01-05 | 52.86d |  |
| 36 | 8.2 | WhammoA Wiring for Drive System | 1d? | 2013-01-05 | 2013-01-05 | 52.86d |  |
| 37 | 8.3 | WhammoA Mechanical Testing for Drive Frame | 1d? | 2013-01-05 | 2013-01-05 | 52.86d | 0d |
| 38 | 8.4 | WhammoB Assemble Drive Frame | 1d? | 2013-01-05 | 2013-01-05 | 52.86d |  |
| 39 | 8.5 | WhammoB Wiring for Drive System | 1d? | 2013-01-05 | 2013-01-05 | 52.86d |  |
| 40 | 8.6 | WhammoB Mechanical Testing for Drive Frame | 1d? | 2013-01-05 | 2013-01-05 | 52.86d |  |
| 41 | 9 | **Assemble Frisbee Collector** | 1d? | 2013-01-05 | 2013-01-05 | 52.86d |  |
| 42 | 9.1 | WhammoA Assemble Frisbee Collector | 1d? | 2013-01-05 | 2013-01-05 | 52.86d |  |
| 43 | 9.2 | WhammoA Wiring for Frisbee Collector | 1d? | 2013-01-05 | 2013-01-05 | 52.86d |  |
| 44 | 9.3 | WhammoA Mechanical Testing for Frisbee Collector | 1d? | 2013-01-05 | 2013-01-05 | 52.86d | 0d |
| 45 | 9.4 | WhammoB Assemble Frisbee Collector | 1d? | 2013-01-05 | 2013-01-05 | 52.86d |  |
| 46 | 9.5 | WhammoB Wiring for Frisbee Collector | 1d? | 2013-01-05 | 2013-01-05 | 52.86d |  |
| 47 | 9.6 | WhammoB Mechanical Testing for Frisbee Collector | 1d? | 2013-01-05 | 2013-01-05 | 52.86d |  |
| 48 | 10 | **Assemble Shooter** | 1d? | 2013-01-05 | 2013-01-05 | 52.86d |  |
| 49 | 10.1 | WhammoA Assemble Shooter | 1d? | 2013-01-05 | 2013-01-05 | 52.86d |  |
| 50 | 10.2 | WhammoA Wiring for Shooter | 1d? | 2013-01-05 | 2013-01-05 | 52.86d |  |
| 51 | 10.3 | WhammoA Mechanical Testing for Shooter | 1d? | 2013-01-05 | 2013-01-05 | 52.86d | 0d |
| 52 | 10.4 | WhammoB Assemble Shooter | 1d? | 2013-01-05 | 2013-01-05 | 52.86d |  |
| 53 | 10.5 | WhammoB Wiring for Shooter | 1d? | 2013-01-05 | 2013-01-05 | 52.86d |  |
| 54 | 10.6 | WhammoB Mechanical Testing for Shooter | 1d? | 2013-01-05 | 2013-01-05 | 52.86d |  |

| ID | WBS | Task | Duration | Start | Finish | Total slack | Free slack |
| --- | --- | --- | --- | --- | --- | --- | --- |
| 55 | 11 | **Assemble Climber** | 1d? | 2013-01-05 | 2013-01-05 | 52.86d |  |
| 56 | 11.1 | WhammoA Assemble Climber | 1d? | 2013-01-05 | 2013-01-05 | 52.86d |  |
| 57 | 11.2 | WhammoA Wiring for Climber | 1d? | 2013-01-05 | 2013-01-05 | 52.86d |  |
| 58 | 11.3 | WhammoA Mechanical Testing for Climber | 1d? | 2013-01-05 | 2013-01-05 | 52.86d | 0d |
| 59 | 11.4 | WhammoB Assemble Climber | 1d? | 2013-01-05 | 2013-01-05 | 52.86d |  |
| 60 | 11.5 | WhammoB Wiring for Climber | 1d? | 2013-01-05 | 2013-01-05 | 52.86d |  |
| 61 | 11.6 | WhammoB Mechanical Testing for Climber | 1d? | 2013-01-05 | 2013-01-05 | 52.86d |  |
| 62 | 12 | **Prototypes** | 1d? | 2013-01-05 | 2013-01-05 | 52.86d |  |
| 63 | 12.1 | Drive Frame | 1d? | 2013-01-05 | 2013-01-05 | 52.86d |  |
| 64 | 12.2 | Frisbee Collector | 1d? | 2013-01-05 | 2013-01-05 | 52.86d |  |
| 65 | 12.3 | Shooter | 1d? | 2013-01-05 | 2013-01-05 | 52.86d |  |
| 66 | 12.4 | Climber | 1d? | 2013-01-05 | 2013-01-05 | 52.86d |  |
